# Cronograma

Schedule from MS Project, 2016-04-29 to 2016-06-22, costs in R$.

## Calendars

- Padrão: Mon-Fri 09:00-12:00, 13:00-18:00; Sat-Sun off.

## Resources

| Resource | Rate |
| --- | --- |
| Carlos | 100 |
| David | 100 |
| Gabriel | 100 |
| Henrique | 100 |
| Joyce | 100 |
| Samuel | 100 |

## Schedule

| ID | WBS | Task | Type | Duration | Start | Finish | Predecessors | Total slack | Constraint | Resources | Work | Cost |
| --- | --- | --- | --- | --- | --- | --- | --- | --- | --- | --- | --- | --- |
| 1 | 1 | **CooAgro** |  | 35d | 2016-04-29 | 2016-06-16 |  |  |  |  | 293h | 24,300 |
| 2 | 1.1 | **Prospecção** |  | 10d | 2016-04-29 | 2016-05-12 |  |  |  |  | 17h | 1,700 |
| 3 | 1.1.1 | **Ptec** |  | 5d | 2016-04-29 | 2016-05-05 |  |  |  |  | 13h | 1,300 |
| 4 | 1.1.1.1 | Estudar dominio | manual | 0.88d | 2016-04-29 | 2016-04-29 |  |  |  | Carlos | 2h | 200 |
| 5 | 1.1.1.2 | Reuniões como cliente | manual | 1.12d | 2016-05-02 | 2016-05-03 | 4 |  |  | Carlos | 3h | 300 |
| 6 | 1.1.1.3 | Redigir Proposta | manual | 3d | 2016-05-04 | 2016-05-06 | 5 |  |  | Carlos; Gabriel; Joyce | 6h | 600 |
| 7 | 1.1.1.4 | Revisar proposta | manual | 1d | 2016-05-09 | 2016-05-09 | 6 |  |  | Samuel | 2h | 200 |
| 8 | 1.1.1.5 | Aprova porposta |  | 1d | 2016-05-10 | 2016-05-10 | 7 | 31d | start no earlier than 2016-05-05 |  |  |  |
| 9 | 1.1.2 | **Est. Pre. Tam** |  | 2d | 2016-05-09 | 2016-05-10 | 3 |  |  |  | 2h | 200 |
| 10 | 1.1.2.1 | Estimar tamanho do projeto | manual | 1d | 2016-05-10 | 2016-05-10 | 7 |  |  | Carlos; Henrique | 1h | 100 |
| 11 | 1.1.2.2 | Revisar estimativa de tamanho | manual | 1d | 2016-05-10 | 2016-05-10 | 10 |  |  | Joyce | 1h | 100 |
| 12 | 1.1.3 | **Est. Pref. Cronograma e Orçamentos** |  | 4d | 2016-05-16 | 2016-05-19 |  |  |  |  | 2h | 200 |
| 13 | 1.1.3.1 | Elaborar Cronograma e Orçamentos Preliminares | manual | 2d | 2016-05-11 | 2016-05-12 | 9 |  |  | Henrique; Joyce; Carlos | 1h | 100 |
| 14 | 1.1.3.2 | Revisão da Elaboração | manual | 2d | 2016-05-13 | 2016-05-16 | 13 |  |  | Gabriel | 1h | 100 |
| 15 | 1.2 | **Análise** |  | 5d | 2016-05-09 | 2016-05-13 |  |  |  |  | 61h | 6,100 |
| 16 | 1.2.1 | Elicitação dos requisitos | manual | 0.88d | 2016-05-10 | 2016-05-10 | 7 |  |  | Carlos | 8h | 800 |
| 17 | 1.2.2 | Validação | manual | 1d | 2016-05-11 | 2016-05-11 | 16 |  |  | David; Gabriel; Henrique; Joyce; Samuel | 3h | 300 |
| 18 | 1.2.3 | **Doc Req** |  | 4d | 2016-05-09 | 2016-05-12 |  |  |  |  | 40h | 4,000 |
| 19 | 1.2.3.1 | Redigir Doc Req | manual | 3d | 2016-05-12 | 2016-05-16 | 17 |  |  | David; Gabriel; Henrique; Joyce; Samuel | 38h | 3,800 |
| 20 | 1.2.3.2 | Revisão do Doc Req | manual | 0.88d | 2016-05-17 | 2016-05-17 | 19 |  |  | Carlos | 2h | 200 |
| 21 | 1.2.4 | **Matriz de Rastriabilidade** |  | 4d | 2016-05-09 | 2016-05-12 |  |  |  |  | 10h | 1,000 |
| 22 | 1.2.4.1 | Elaborar a matriz | manual | 1.88d | 2016-05-18 | 2016-05-19 | 20 |  |  | Carlos | 8h | 800 |
| 23 | 1.2.4.2 | Revisar a Matriz | manual | 1d | 2016-05-24 | 2016-05-24 | 22 |  |  | David; Gabriel; Henrique; Joyce; Samuel | 2h | 200 |
| 24 | 1.3 | Projeto | manual | 1.88d | 2016-05-09 | 2016-05-10 |  |  |  | Carlos | 15h | 1,500 |

| ID | WBS | Task | Type | Duration | Start | Finish | Predecessors | Resources | Work | Cost |
| --- | --- | --- | --- | --- | --- | --- | --- | --- | --- | --- |
| 25 | 1.4 | **Implementação** |  | 24d | 2016-05-16 | 2016-06-16 |  |  | 200h | 15,000 |
| 26 | 1.4.1 | Release1 | manual | 5d | 2016-05-25 | 2016-05-31 | 23 | David; Gabriel; Henrique; Joyce; Samuel | 50h | 5,000 |
| 27 | 1.4.2 | Release2 | manual | 6d | 2016-06-01 | 2016-06-08 | 26 | David; Gabriel; Henrique; Joyce; Samuel | 50h | 5,000 |
| 28 | 1.4.3 | Release3 | manual | 10d | 2016-06-09 | 2016-06-22 | 27 | David; Gabriel; Henrique; Joyce; Samuel | 50h | 5,000 |
| 29 | 1.4.4 | Release4 | manual | 6d | 2016-06-09 | 2016-06-16 |  |  | 50h |  |
